# SCS Automatisierung

Schedule from MS Project, 2009-02-03 to 2012-03-12, costs in Fr., A marks actual dates.
Telekurs Services AG

## Calendars

- Standard: Mon-Fri 08:00-12:00, 13:00-17:00; Sat-Sun off.

## Resources

| Resource | Group | Rate | Cost per use |
| --- | --- | --- | --- |
| Martin Leucht | Testmanager | 40 |  |
| Marc Siegmund | Testmanager | 40 |  |
| Jörg Blaser | Tester | 45 |  |
| Jörg Lüthi | Tester | 45 |  |
| Daniel Von Allmen |  | 50 |  |
| Steffen Page |  | 45 |  |
| Fredy Wagner |  | 45 |  |
| Test-Host SCS |  | 10 | 10 |
| Test-Host saferpay |  | 10 | 10 |
| tksyr |  | 40 |  |

## Schedule

| ID | WBS | Task | Type | Duration | Start | Finish | Predecessors | Complete | Constraint | Resources | Work | Actual work | Cost | Actual cost |
| --- | --- | --- | --- | --- | --- | --- | --- | --- | --- | --- | --- | --- | --- | --- |
| 1 | 1 | **Ist-Analyse** |  | 9d | 2009-02-03 A | 2009-02-13 A |  | 100% | start no earlier than 2009-02-02 | Marc Siegmund [70%] | 50.4h | 50.4h | 2,016 | 2,016 |
| 2 | 1.1 | Arbeitsvorgänge untersuchen |  | 2d | 2009-02-03 A | 2009-02-04 A |  | 100% |  |  |  |  |  |  |
| 3 | 1.2 | Schwachstellen aufdecken |  | 2d | 2009-02-04 A | 2009-02-05 A |  | 100% |  |  |  |  |  |  |
| 4 | 1.3 | Testvorgehen |  | 3d | 2009-02-06 A | 2009-02-10 A |  | 100% |  |  |  |  |  |  |
| 5 | 1.4 | Testdokumente |  | 2d | 2009-02-12 A | 2009-02-13 A |  | 100% |  |  |  |  |  |  |
| 6 | 2 | **Grob-Konzept für Testen mit Automatisierung** |  | 19d | 2009-03-02 A | 2009-03-26 A | 1 | 100% | start no earlier than 2009-03-02 | Marc Siegmund [80%] | 121.6h | 121.6h | 4,864 | 4,864 |
| 7 | 2.1 | alternative Lösungsvorschläge |  | 2d | 2009-03-02 A | 2009-03-03 A |  | 100% |  |  |  |  |  |  |
| 8 | 2.2 | Durchführbarkeitanalyse |  | 3d | 2009-03-16 A | 2009-03-18 A |  | 100% |  |  |  |  |  |  |
| 9 | 2.3 | Anforderungen ermitteln |  | 8d | 2009-03-17 A | 2009-03-26 A |  | 100% |  |  |  |  |  |  |
| 10 | 3 | **Fein-Konzept für Testen mit Automatisierung** |  | 70d | 2009-04-06 A | 2009-07-10 A | 6 | 100% | start no earlier than 2009-04-06 | Marc Siegmund [60%] | 364.48h | 364.48h | 14,671.6 | 14,671.6 |
| 11 | 3.1 | Infrastruktur |  | 3d | 2009-04-06 A | 2009-04-08 A |  | 100% |  |  |  |  |  |  |
| 12 | 3.2 | Testvorgehen |  | 5d | 2009-04-06 A | 2009-04-10 A |  | 100% |  |  |  |  |  |  |
| 13 | 3.3 | Testobjekte |  | 15d | 2009-05-11 A | 2009-05-29 A |  | 100% |  |  |  |  |  |  |
| 14 | 3.4 | **Entscheidung Software Einsatz** |  | 10d | 2009-04-06 A | 2009-04-17 A |  | 100% |  |  |  |  |  |  |
| 15 | 3.4.1 | Standardsoftware |  | 3d | 2009-04-06 A | 2009-04-08 A |  | 100% |  |  |  |  |  |  |
| 16 | 3.4.2 | Individualsoftware |  | 8d | 2009-04-07 A | 2009-04-16 A |  | 100% |  |  |  |  |  |  |
| 17 | 3.4.3 | Hardware |  | 3d | 2009-04-13 A | 2009-04-15 A |  | 100% |  |  |  |  |  |  |
| 18 | 3.4.4 | Software |  | 3d | 2009-04-15 A | 2009-04-17 A |  | 100% |  |  |  |  |  |  |
| 19 | 3.5 | **Review des Konzepts** |  | 5d | 2009-07-06 A | 2009-07-10 A |  | 100% |  |  | 28.48h | 28.48h | 1,231.6 | 1,231.6 |
| 20 | 3.5.1 | Review vom Team |  | 32h | 2009-07-06 A | 2009-07-09 A |  | 100% | must finish on 2009-07-09 | Daniel Von Allmen; Jörg Blaser; Fredy Wagner; Steffen Page; Martin Leucht; Jörg Lüthi | 18.48h | 18.48h | 831.6 | 831.6 |
| 21 | 3.5.2 | Review vom Autor |  | 6h | 2009-07-07 A | 2009-07-07 A |  | 100% | finish no later than 2009-07-10 | Marc Siegmund | 6h | 6h | 240 | 240 |
| 22 | 3.5.3 | Zusammenführung der Reviews | milestone | 4h | 2009-07-10 A | 2009-07-10 A | 20, 21 | 100% | must finish on 2009-07-10 | Marc Siegmund | 4h | 4h | 160 | 160 |
| 23 | 4 | **Aufbau Testumgebung** |  | 351d? | 2009-05-04 A | 2010-09-06 A |  | 100% | start no earlier than 2009-05-04 |  | 88h | 88h | 3,520 | 3,520 |
| 24 | 4.1 | **Test Workstation** |  | 351d? | 2009-05-04 A | 2010-09-06 A |  | 100% |  |  | 88h | 88h | 3,520 | 3,520 |
| 25 | 4.1.1 | **EWP-Notebook konfigurieren** |  | 5d | 2009-05-04 A | 2009-05-08 A |  | 100% |  | Marc Siegmund [80%] | 32h | 32h | 1,280 | 1,280 |
| 26 | 4.1.1.1 | Betriebsysteme |  | 2d | 2009-05-04 A | 2009-05-05 A |  | 100% |  |  |  |  |  |  |
| 27 | 4.1.1.2 | virtual Box |  | 0.5d | 2009-05-05 A | 2009-05-05 A |  | 100% |  |  |  |  |  |  |
| 28 | 4.1.1.3 | Lizenz |  | 0.5d | 2009-05-06 A | 2009-05-06 A |  | 100% |  |  |  |  |  |  |
| 29 | 4.1.1.4 | Quality Center |  | 1d | 2009-05-07 A | 2009-05-07 A |  | 100% |  |  |  |  |  |  |
| 30 | 4.1.1.5 | Quicktest Professional |  | 1d | 2009-05-08 A | 2009-05-08 A |  | 100% |  |  |  |  |  |  |

| ID | WBS | Task | Duration | Start | Finish | Predecessors | Complete | Remaining | Total slack | Constraint | Resources | Work | Actual work | Cost | Actual cost |
| --- | --- | --- | --- | --- | --- | --- | --- | --- | --- | --- | --- | --- | --- | --- | --- |
| 31 | 4.1.2 | **Test-Workstation installieren** | 10d? | 2009-05-11 A | 2009-05-22 A |  | 100% |  |  |  | Marc Siegmund [70%] | 56h | 56h | 2,240 | 2,240 |
| 32 | 4.1.2.1 | **Betriebsysteme** | 3d | 2009-05-11 A | 2009-05-13 A |  | 100% |  |  |  |  |  |  |  |  |
| 33 | 4.1.2.1.1 | Linux | 1d | 2009-05-11 A | 2009-05-11 A |  | 100% |  |  |  |  |  |  |  |  |
| 34 | 4.1.2.1.2 | Windows XP | 1d | 2009-05-12 A | 2009-05-12 A |  | 100% |  |  |  |  |  |  |  |  |
| 35 | 4.1.2.1.3 | Windows Vista | 1d | 2009-05-13 A | 2009-05-13 A |  | 100% |  |  |  |  |  |  |  |  |
| 36 | 4.1.2.2 | **Weitere Software** | 7d? | 2009-05-14 A | 2009-05-22 A | 32 | 100% |  |  |  |  |  |  |  |  |
| 37 | 4.1.2.2.1 | virtual Box | 1d | 2009-05-14 A | 2009-05-14 A |  | 100% |  |  |  |  |  |  |  |  |
| 38 | 4.1.2.2.2 | Lizenz | 1d | 2009-05-15 A | 2009-05-15 A |  | 100% |  |  |  |  |  |  |  |  |
| 39 | 4.1.2.2.3 | Quality Center | 1d? | 2009-05-18 A | 2009-05-18 A |  | 100% |  |  |  |  |  |  |  |  |
| 40 | 4.1.2.2.4 | Quicktest Professional | 4d | 2009-05-19 A | 2009-05-22 A |  | 100% |  |  |  |  |  |  |  |  |
| 41 | 4.1.3 | **Infrastruktur** | 5d? | 2010-08-31 A | 2010-09-06 A |  | 100% |  |  |  |  |  |  |  |  |
| 42 | 4.1.3.1 | QTP-QC-Connector | 5d | 2010-08-31 A | 2010-09-06 A |  | 100% |  |  | start no earlier than 2010-08-31 |  |  |  |  |  |
| 43 | 4.1.3.2 | QC via Zertifikat | 5d? | 2010-08-31 A | 2010-09-06 A |  | 100% |  |  | start no earlier than 2010-08-31 |  |  |  |  |  |
| 44 | 4.1.3.3 | WES | 5d? | 2010-08-31 A | 2010-09-06 A |  | 100% |  |  | start no earlier than 2010-08-31 |  |  |  |  |  |
| 45 | 5 | **Entwicklung automatisierter Tests** | 725d | 2009-06-02 A | 2012-03-12 |  | 50% | 360.28d | 0d | start no earlier than 2009-06-02 | Marc Siegmund | 2576.38h | 74.2h | 103,055.2 |  |
| 46 | 5.1 | **Automatisierung von Konfigurations-Tests** | 3d | 2009-07-01 A | 2009-07-03 A |  | 100% |  |  |  |  |  |  |  |  |
| 47 | 5.1.1 | Analyse | 3d | 2009-07-01 A | 2009-07-03 A |  | 100% |  |  | start no earlier than 2009-09-07 |  |  |  |  |  |
| 48 | 5.2 | **Systemtests (Zebra)** | 661d | 2009-06-02 A | 2011-12-13 |  | 56% | 289.71d | 64d |  |  |  |  |  |  |
| 49 | 5.2.1 | Login | 3d | 2009-11-23 A | 2009-11-25 A |  | 100% |  |  | start no earlier than 2009-10-01 |  |  |  |  |  |
| 50 | 5.2.2 | Logoff | 2d | 2009-06-02 A | 2009-06-03 A |  | 100% |  |  |  |  |  |  |  |  |
| 51 | 5.2.3 | **Kontakt verwalten** | 13d | 2010-04-05 A | 2010-04-21 A |  | 100% |  |  |  |  |  |  |  |  |
| 52 | 5.2.3.1 | Erfassung | 5d | 2010-04-05 A | 2010-04-09 A |  | 100% |  |  | start no earlier than 2010-04-05 |  |  |  |  |  |
| 53 | 5.2.3.2 | Darstellung | 3d | 2010-04-12 A | 2010-04-14 A | 52 | 100% |  |  |  |  |  |  |  |  |
| 54 | 5.2.3.3 | Bearbeitung | 5d | 2010-04-15 A | 2010-04-21 A | 53 | 100% |  |  |  |  |  |  |  |  |

Notes:
- 46: Analyse Machbarkeit / Analyse Aufwand / (alle möglichen) Konfigurationen setzen / (alle möglichen) Konfigurationen teste / Korrekt konfiguriert / Transaktionen funktionieren mit der (neuen) Konfig / Terminal-Simulator, für Transaktionen / Terminals vorbereiten / Ep2 / Je nach Provider / Externe Terminals / Konfiguration managen…per qtp anlegen / Tid zurückliefern / referenzsystem

| ID | WBS | Task | Duration | Start | Finish | Predecessors | Complete | Remaining | Total slack | Free slack | Constraint |
| --- | --- | --- | --- | --- | --- | --- | --- | --- | --- | --- | --- |
| 55 | 5.2.4 | **Standort verwalten** | 28d | 2010-04-30 A | 2010-06-08 A | 51 | 100% |  |  |  |  |
| 56 | 5.2.4.1 | Erfassung | 6d | 2010-05-10 A | 2010-05-17 A |  | 100% |  |  |  |  |
| 57 | 5.2.4.2 | Darstellung | 3d | 2010-04-30 A | 2010-05-18 A | 56 | 100% |  |  |  |  |
| 58 | 5.2.4.3 | Bearbeitung | 4d | 2010-05-05 A | 2010-05-24 A | 57 | 100% |  |  |  |  |
| 59 | 5.2.4.4 | Neues Feld "Zusatz" | 1d | 2010-06-08 A | 2010-06-08 A |  | 100% |  |  |  | start no earlier than 2010-06-08 |
| 60 | 5.2.4.5 | Anpassung Bezeichnung CompanyName | 1d | 2010-06-08 A | 2010-06-08 A |  | 100% |  |  |  | start no earlier than 2010-06-08 |
| 61 | 5.2.5 | **Kunde verwalten** | 26.6d | 2010-05-11 A | 2010-06-16 A | 55 | 100% |  |  |  |  |
| 62 | 5.2.5.1 | Erfassung | 7d | 2010-05-11 A | 2010-06-09 A |  | 100% |  |  |  |  |
| 63 | 5.2.5.2 | Darstellung | 5d | 2010-06-01 A | 2010-06-10 A | 62 | 100% |  |  |  |  |
| 64 | 5.2.5.3 | Bearbeitung | 7d | 2010-06-07 A | 2010-06-16 A | 63 | 100% |  |  |  |  |
| 65 | 5.2.5.4 | Anpassung Bezeichnung CompanyName | 1d | 2010-06-09 A | 2010-06-09 A |  | 100% |  |  |  | start no earlier than 2010-06-08 |
| 66 | 5.2.5.5 | Neues Feld "Zusatz" | 1d | 2010-06-09 A | 2010-06-09 A | 60 | 100% |  |  |  |  |
| 67 | 5.2.6 | **Terminal verwalten** | 32.1d | 2010-09-20 A | 2010-11-03 | 61 | 82% | 5.93d | 191.74d | 112.9d |  |
| 68 | 5.2.6.1 | Erfassung | 15d | 2010-09-27 A | 2010-10-19 A |  | 100% |  |  |  |  |
| 69 | 5.2.6.2 | Darstellung | 5d | 2010-09-20 A | 2010-10-19 A | 68 | 100% |  |  |  |  |
| 70 | 5.2.6.3 | Bearbeitung | 6d | 2010-10-19 A | 2010-11-03 | 69 | 20% | 4.8d | 191.74d |  |  |
| 71 | 5.2.7 | **Brands verwalten** | 167d | 2011-04-11 A | 2011-11-29 | 67 | 9% | 152.16d | 64d | 0d |  |
| 72 | 5.2.7.1 | Erfassung | 20d | 2011-04-11 A | 2011-05-06 |  | 20% | 16d | 186d | 122d |  |
| 73 | 5.2.7.2 | Darstellung | 10d | 2011-10-26 | 2011-11-08 | 72 |  |  | 64d | 0d | start no earlier than 2011-10-26 |
| 74 | 5.2.7.3 | Bearbeitung | 15d | 2011-11-09 | 2011-11-29 | 73 |  |  | 64d |  | start no earlier than 2011-10-26 |
| 75 | 5.2.8 | **Berechtigungen** | 10d | 2011-11-30 | 2011-12-13 | 71 |  |  | 64d |  |  |
| 76 | 5.2.8.1 | Erfassung | 3d | 2011-11-30 | 2011-12-02 |  |  |  | 71d |  |  |
| 77 | 5.2.8.2 | Darstellung | 1d | 2011-11-30 | 2011-11-30 |  |  |  | 73d |  |  |
| 78 | 5.2.8.3 | Bearbeitung | 2d | 2011-11-30 | 2011-12-01 |  |  |  | 72d |  |  |
| 79 | 5.2.8.4 | Prüfen | 10d | 2011-11-30 | 2011-12-13 |  |  |  | 64d |  |  |

| ID | WBS | Task | Duration | Start | Finish | Predecessors | Complete | Total slack | Constraint |
| --- | --- | --- | --- | --- | --- | --- | --- | --- | --- |
| 80 | 5.3 | **Simulator** | 50d | 2012-01-03 | 2012-03-12 |  |  | 0d |  |
| 81 | 5.3.1 | COI | 50d | 2012-01-03 | 2012-03-12 |  |  | 0d | start no earlier than 2012-01-03 |
| 83 | 5.4 | **DB-Checks** | 600.5d | 2009-06-02 A | 2011-09-20 A |  | 100% |  |  |
| 84 | 5.4.1 | **Defaultfunktionen** | 600d | 2009-06-02 A | 2011-09-19 A |  | 100% |  |  |
| 85 | 5.4.1.1 | **Erste Version** | 10d | 2009-06-02 A | 2009-06-15 A |  | 100% |  |  |
| 86 | 5.4.1.1.1 | Entwicklung | 10d | 2009-06-02 A | 2009-06-15 A |  | 100% |  |  |
| 87 | 5.4.1.1.2 | Fehlerkorrektur | 2d | 2009-06-02 A | 2009-06-03 A |  | 100% |  |  |
| 88 | 5.4.1.2 | **zweite Version** | 4d | 2009-06-02 A | 2009-06-05 A |  | 100% |  |  |
| 89 | 5.4.1.2.1 | Entwicklung | 4d | 2009-06-02 A | 2009-06-05 A |  | 100% |  |  |
| 90 | 5.4.1.2.2 | Fehlerkorrektur | 2d | 2009-06-02 A | 2009-06-03 A |  | 100% |  |  |
| 91 | 5.4.1.3 | **dritte Version (produktiver DB-Check)** | 8d | 2010-09-06 A | 2010-09-15 A |  | 100% |  |  |
| 92 | 5.4.1.3.1 | Entwicklung | 2d | 2010-09-06 A | 2010-09-07 A |  | 100% |  |  |
| 93 | 5.4.1.3.2 | Fehlerkorrektur | 3d | 2010-09-13 A | 2010-09-15 A |  | 100% |  |  |
| 94 | 5.4.1.4 | **Copy and Paste** | 3d | 2011-09-15 A | 2011-09-19 A | 91 | 100% |  |  |
| 95 | 5.4.1.4.1 | Textfeld | 1d | 2011-09-15 A | 2011-09-15 A |  | 100% |  | start no earlier than 2011-09-15 |
| 96 | 5.4.1.4.2 | ReaderHelper | 2d | 2011-09-16 A | 2011-09-19 A | 95 | 100% |  |  |
| 97 | 5.4.1.5 | **Generisch** | 2d | 2011-09-15 A | 2011-09-16 A |  | 100% |  |  |
| 98 | 5.4.1.5.1 | Reader | 2d | 2011-09-15 A | 2011-09-16 A |  | 100% |  | start no earlier than 2011-09-15 |
| 99 | 5.4.1.5.2 | Helper | 2d | 2011-09-15 A | 2011-09-16 A |  | 100% |  | start no earlier than 2011-09-15 |
| 100 | 5.4.1.5.3 | DB Struct | 1d | 2011-09-15 A | 2011-09-15 A |  | 100% |  | start no earlier than 2011-09-15 |
| 101 | 5.4.2 | **Erweiterung/Generischer** | 0.5d | 2011-09-20 A | 2011-09-20 A | 97 | 100% |  |  |
| 102 | 5.4.2.1 | Währungen | 0.5d | 2011-09-20 A | 2011-09-20 A |  | 100% |  | start no earlier than 2011-09-15 |
| 103 | 5.4.2.2 | Limite | 0.5d | 2011-09-20 A | 2011-09-20 A |  | 100% |  | start no earlier than 2011-09-15 |
| 104 | 5.4.2.3 | Limite Währungen | 0.5d | 2011-09-20 A | 2011-09-20 A |  | 100% |  | start no earlier than 2011-09-15 |
| 105 | 5.4.2.4 | Defaultfunktionen anpassen | 0.5d | 2011-09-20 A | 2011-09-20 A |  | 100% |  | start no earlier than 2011-09-15 |

| ID | WBS | Task | Duration | Start | Finish | Predecessors | Complete | Remaining | Total slack | Free slack | Constraint | Resources | Work | Actual work | Cost | Actual cost |
| --- | --- | --- | --- | --- | --- | --- | --- | --- | --- | --- | --- | --- | --- | --- | --- | --- |
| 107 | 6 | **Terminal Safe** | 38d? | 2011-10-17 A | 2011-12-07 |  | 19% | 30.67d? | 68d |  |  | tksyr [80%] | 243.2h | 46.9h | 9,728 | 1,876.11 |
| 108 | 6.1 | **Konzept** | 6d | 2011-10-17 A | 2011-10-24 A |  | 100% |  |  |  |  |  |  |  |  |  |
| 109 | 6.1.1 | erstellen | 1d | 2011-10-17 A | 2011-10-17 A |  | 100% |  |  |  | start no earlier than 2011-10-17 |  |  |  |  |  |
| 110 | 6.1.2 | prüfen | 0.5d | 2011-10-19 A | 2011-10-19 A |  | 100% |  |  |  | start no earlier than 2011-10-19 |  |  |  |  |  |
| 111 | 6.1.3 | präsenieren | 2d | 2011-10-21 A | 2011-10-24 A |  | 100% |  |  |  | start no earlier than 2011-10-21 |  |  |  |  |  |
| 112 | 6.2 | **Phase 1** | 7d? | 2011-10-31 A | 2011-11-08 |  | 17% | 5.82d? | 86d | 0d |  |  |  |  |  |  |
| 113 | 6.2.1 | **Entwickeln** | 5d | 2011-10-31 A | 2011-11-04 |  | 21% | 3.94d | 86d | 0d |  |  |  |  |  |  |
| 114 | 6.2.1.1 | Helper | 2d | 2011-10-31 A | 2011-11-01 |  | 50% | 1d | 89d |  | start no earlier than 2011-10-21 |  |  |  |  |  |
| 115 | 6.2.1.2 | Entity für Terminal | 1d | 2011-11-01 A | 2011-11-01 |  | 90% | 0.1d | 89d |  | start no earlier than 2011-10-21 |  |  |  |  |  |
| 116 | 6.2.1.3 | Vergleich | 1d | 2011-11-02 | 2011-11-02 |  |  |  | 88d |  | start no earlier than 2011-11-02 |  |  |  |  |  |
| 117 | 6.2.1.4 | Persistenz | 2d | 2011-11-03 | 2011-11-04 |  |  |  | 86d |  | start no earlier than 2011-11-03 |  |  |  |  |  |
| 118 | 6.2.1.5 | GUI | 3d | 2011-10-31 | 2011-11-02 |  |  |  | 88d |  | start no earlier than 2011-10-31 |  |  |  |  |  |
| 119 | 6.2.2 | Verteilung | 2h | 2011-11-07 | 2011-11-07 | 113 |  |  | 87.75d |  | start no earlier than 2011-10-21 |  |  |  |  |  |
| 120 | 6.2.3 | Testen | 1d? | 2011-11-07 | 2011-11-07 | 113 |  |  | 86d | 0d |  |  |  |  |  |  |
| 121 | 6.2.4 | Korrigieren | 1d? | 2011-11-08 | 2011-11-08 | 120 |  |  | 86d |  |  |  |  |  |  |  |
| 122 | 6.3 | **Phase 2** | 21d? | 2011-11-09 | 2011-12-07 | 112 |  |  | 68d |  |  |  |  |  |  |  |
| 123 | 6.3.1 | **Entwickeln** | 3d | 2011-12-05 | 2011-12-07 |  |  |  | 68d |  |  |  |  |  |  |  |
| 124 | 6.3.1.1 | Entity für Brands | 3d | 2011-12-05 | 2011-12-07 |  |  |  | 68d |  | start no earlier than 2011-12-05 |  |  |  |  |  |
| 125 | 6.3.1.2 | Helper | 2d | 2011-12-05 | 2011-12-06 |  |  |  | 69d |  | start no earlier than 2011-12-05 |  |  |  |  |  |
| 126 | 6.3.1.3 | Vergleich | 1d | 2011-12-05 | 2011-12-05 |  |  |  | 70d |  | start no earlier than 2011-12-05 |  |  |  |  |  |
| 127 | 6.3.1.4 | Persistenz | 1d | 2011-12-05 | 2011-12-05 |  |  |  | 70d |  | start no earlier than 2011-12-05 |  |  |  |  |  |
| 128 | 6.3.1.5 | GUI | 2d | 2011-12-05 | 2011-12-06 |  |  |  | 69d |  | start no earlier than 2011-12-05 |  |  |  |  |  |
| 129 | 6.3.2 | Verteilung | 3d | 2011-12-05 | 2011-12-07 |  |  |  | 68d |  | start no earlier than 2011-12-05 |  |  |  |  |  |
| 130 | 6.3.3 | Testen | 2h | 2011-11-09 | 2011-11-09 |  |  |  | 88.75d |  |  |  |  |  |  |  |
| 131 | 6.3.4 | Korrigieren | 1d? | 2011-11-09 | 2011-11-09 |  |  |  | 88d |  |  |  |  |  |  |  |
